# Rainbow Hunt

Schedule from MS Project, 2022-10-15 to 2023-06-28, status date 2023-01-17, costs in $, A marks actual dates.

## Calendars

- Standard: Mon-Fri 08:00-12:00, 13:00-17:00; Sat-Sun off.

## Resources

| Resource | Rate |
| --- | --- |
| Oyun Tasarımcısı | 45 |
| Oyun Sanatçısı | 55 |
| Ses Mühendisi | 40 |
| Oyun Programcısı | 70 |
| Oyun Seviye Tasarımcısı | 65 |
| Oyun Testçisi | 50 |
| Takım Lideri | 90 |
| Senkron Mühendisi | 60 |
| Bilgisayar Ekipmanları | 5000 |
| Ofis ve Kira |  |
| Yazılım |  |
| Pazarlama ve Reklam | 40 |
| Araştırma ve Geliştirme | 50 |
| Hukuk ve Danışmanlık | 45 |
| Finans ve Muhasebe | 60 |
| İdari | 80 |
| Yedek Bilgisayar Parçaları | 1250 |
| Test ve Analiz Araçları | 3000 |

## Schedule

| ID | WBS | Task | Type | Duration | Start | Finish | Predecessors | Complete | Remaining | Baseline start | Baseline finish | Baseline duration | Total slack | Free slack | Constraint | Resources | Work | Actual work | Cost | Baseline cost | Actual cost |
| --- | --- | --- | --- | --- | --- | --- | --- | --- | --- | --- | --- | --- | --- | --- | --- | --- | --- | --- | --- | --- | --- |
| 1 | 1 | Proje Teklifi |  | 3d | 2022-10-15 A | 2022-10-18 A |  | 100% |  | 2022-10-15 | 2022-10-18 | 3d |  |  |  | Araştırma ve Geliştirme; Hukuk ve Danışmanlık; Finans ve Muhasebe; İdari | 96h | 96h | 5,640 | 5,640 | 5,640 |
| 2 | 2 | **Analizler ve Konsept Belirlenmesi** |  | 28d | 2022-10-19 A | 2022-11-25 | 1 | 82% | 5d | 2022-10-19 | 2022-11-25 | 28d | 0d |  |  |  | 528h | 410h | 58,360 | 40,640 | 51,400 |
| 3 | 2.1 | **Piyasa Araştırması** |  | 7d | 2022-10-19 A | 2022-10-27 |  | 67% | 2.33d | 2022-10-19 | 2022-10-22 | 3d | 3.25d |  |  |  | 128h | 80h | 6,720 | 4,240 | 4,240 |
| 4 | 2.1.1 | Market Analizi |  | 2d | 2022-10-19 A | 2022-10-20 A |  | 100% |  | 2022-10-19 | 2022-10-20 | 2d |  |  |  | Araştırma ve Geliştirme; Finans ve Muhasebe | 32h | 32h | 1,760 | 1,760 | 1,760 |
| 5 | 2.1.2 | Hedef Kitle Araştırması |  | 4d | 2022-10-21 A | 2022-10-27 | 4FS+3d | 50% | 2d | 2022-10-21 | 2022-10-22 | 2d | 3.25d | 0d |  | Araştırma ve Geliştirme; Finans ve Muhasebe; Hukuk ve Danışmanlık | 96h | 48h | 4,960 | 2,480 | 2,480 |
| 6 | 2.2 | **Oyun Araştırması** |  | 17d | 2022-10-19 A | 2022-11-10 |  | 83% | 2.98d | 2022-10-19 | 2022-11-09 | 16d | 11d |  |  |  | 160h | 90h | 36,240 | 21,000 | 31,760 |
| 7 | 2.2.1 | Oyun Türü ve Platform Belirleme |  | 4d | 2022-10-31 A | 2022-11-10 | 5FS+5d | 56% | 1.75d | 2022-10-31 | 2022-11-04 | 5d | 11d |  |  | Bilgisayar Ekipmanları [200%]; Finans ve Muhasebe; Oyun Programcısı; Oyun Sanatçısı; Oyun Tasarımcısı; Takım Lideri | 160h | 90h | 20,240 | 5,000 | 15,760 |
| 8 | 2.2.2 | Gerekli Programları Belirleme |  | 3d | 2022-11-07 A | 2022-11-09 A | 7 | 100% |  | 2022-11-07 | 2022-11-09 | 3d |  |  |  | Bilgisayar Ekipmanları; Test ve Analiz Araçları; Yazılım [0.1%] |  |  | 8,000 | 8,000 | 8,000 |
| 9 | 2.2.3 | Gerekli Aktörleri (Actors) Belirleme |  | 3d | 2022-10-19 A | 2022-10-21 A |  | 100% |  | 2022-10-19 | 2022-10-21 | 3d |  |  |  | Bilgisayar Ekipmanları; Test ve Analiz Araçları; Yazılım [0.1%] |  |  | 8,000 | 8,000 | 8,000 |
| 10 | 2.3 | Nihai Ürünün Taslağının Oluşturulması |  | 5d | 2022-11-21 A | 2022-11-25 A | 9FS+3d | 100% |  | 2022-11-21 | 2022-11-25 | 5d |  |  | start no earlier than 2022-11-20 | Finans ve Muhasebe; Oyun Programcısı; Oyun Sanatçısı; Oyun Seviye Tasarımcısı; Oyun Tasarımcısı; Takım Lideri | 240h | 240h | 15,400 | 15,400 | 15,400 |
| 11 | 3 | PROJE İÇERİĞİ KESİNLEŞTİRME | milestone | 0d | 2022-11-25 A | 2022-11-25 A |  | 100% |  | 2022-11-25 | 2022-11-25 | 0d |  |  | start no earlier than 2022-11-25 |  |  |  |  |  |  |
| 12 | 4 | **Oyun Tasarımı** |  | 100d | 2022-11-28 A | 2023-04-15 | 2 | 39% | 61.11d | 2022-11-28 | 2023-03-04 | 70d | 1d | 0d |  |  | 2136h | 736h | 152,120 | 102,320 | 60,320 |
| 13 | 4.1 | **Gerekli Ayarlamalar** |  | 10d | 2022-11-28 A | 2022-12-09 |  | 92% | 0.77d | 2022-11-28 | 2022-12-09 | 10d | 91d |  |  |  | 176h | 136h | 20,320 | 12,720 | 17,720 |
| 14 | 4.1.1 | Gerekli Programların Kurulumu |  | 3d | 2022-11-28 A | 2022-11-30 A |  | 100% |  | 2022-11-28 | 2022-11-29 | 2d |  |  |  | Bilgisayar Ekipmanları [200%]; Yazılım [0.1%] |  |  | 10,000 | 5,000 | 10,000 |
| 15 | 4.1.2 | Kullanılacak Oyunlaştırma Ögelerinin (Assets, Actors, Meshes…) Projeye Aktarılması |  | 3d | 2022-11-30 A | 2022-12-02 | 14 | 67% | 1d | 2022-11-30 | 2022-12-01 | 2d | 96d |  |  | Oyun Programcısı; Oyun Sanatçısı; Oyun Seviye Tasarımcısı; Oyun Tasarımcısı; Takım Lideri; Yazılım [0.1%] | 120h | 80h | 7,800 | 5,200 | 5,200 |
| 16 | 4.1.3 | Arayüz Tasarımı |  | 7d | 2022-12-02 A | 2022-12-09 A | 15 | 100% |  | 2022-12-02 | 2022-12-09 | 7d |  |  |  | Oyun Tasarımcısı | 56h | 56h | 2,520 | 2,520 | 2,520 |
| 17 | 4.2 | **Çevre ve Oynanış** |  | 55d | 2022-12-10 A | 2023-02-25 |  | 46% | 29.62d | 2022-12-10 | 2023-01-28 | 35d | 1d |  |  |  | 1480h | 600h | 98,200 | 56,000 | 42,600 |
| 18 | 4.2.1 | Mekaniklerin Oluşturulması |  | 20d | 2022-12-10 A | 2023-01-02 | 16FS+2d | 75% | 5d | 2022-12-10 | 2022-12-30 | 15d | 11d | 0d |  | Oyun Programcısı; Test ve Analiz Araçları [200%]; Yazılım [0.1%] | 160h | 120h | 17,200 | 11,400 | 14,400 |
| 19 | 4.2.2 | Dünyanın Oluşturulması |  | 30d | 2022-12-31 A | 2023-02-03 | 18 | 50% | 15d | 2022-12-31 | 2023-01-17 | 15d | 1d | 0d |  | Oyun Programcısı; Oyun Sanatçısı; Oyun Seviye Tasarımcısı; Oyun Tasarımcısı | 960h | 480h | 56,400 | 28,200 | 28,200 |
| 20 | 4.2.3 | Belirlenen Konsepte Uygun Hale Getirilmesi |  | 15d | 2023-02-09 | 2023-02-25 | 19FS+3d |  |  | 2023-01-18 | 2023-01-28 | 10d | 1d | 0d |  | Oyun Programcısı; Oyun Tasarımcısı; Takım Lideri | 360h |  | 24,600 | 16,400 |  |
| 21 | 4.3 | **Senkron Ayarları** |  | 30d | 2023-03-04 | 2023-04-15 |  |  |  | 2023-01-30 | 2023-03-04 | 25d | 1d |  |  |  | 480h |  | 33,600 | 33,600 |  |
| 22 | 4.3.1 | Ses Efektlerinin Projeye Aktarılması ve Senkron Ayarlamaları |  | 15d | 2023-03-04 | 2023-03-22 | 20FS+5d |  |  | 2023-01-30 | 2023-02-15 | 15d | 1d | 0d |  | Ses Mühendisi; Takım Lideri; Yazılım [0.1%] | 240h |  | 15,600 | 15,600 |  |
| 23 | 4.3.2 | Görsel Tasarım ve Animasyonların Projeye Aktarılması ve Senkron Ayarlamaları |  | 15d | 2023-03-30 | 2023-04-15 | 22FS+5d |  |  | 2023-02-16 | 2023-03-04 | 15d | 1d |  |  | Senkron Mühendisi; Takım Lideri; Yazılım [0.1%] | 240h |  | 18,000 | 18,000 |  |
| 24 | 5 | ARA DEĞERLENDİRME | milestone | 0d | 2023-03-21 | 2023-03-21 |  |  |  | 2023-03-21 | 2023-03-21 | 0d | 55d |  | start no earlier than 2023-03-21 |  |  |  |  |  |  |

| ID | WBS | Task | Type | Duration | Start | Finish | Predecessors | Complete | Remaining | Baseline start | Baseline finish | Baseline duration | Total slack | Constraint | Resources | Work | Actual work | Cost | Baseline cost | Actual cost |
| --- | --- | --- | --- | --- | --- | --- | --- | --- | --- | --- | --- | --- | --- | --- | --- | --- | --- | --- | --- | --- |
| 25 | 6 | **Testler ve Geliştirme** |  | 53d | 2023-04-17 | 2023-06-28 | 12 |  |  | 2023-03-06 | 2023-05-12 | 50d | 0d |  |  | 1160h |  | 84,200 | 84,200 |  |
| 26 | 6.1 | Test Raporunun Hazırlanması |  | 5d | 2023-04-17 | 2023-04-21 |  |  |  | 2023-03-06 | 2023-03-10 | 5d | 0d |  | Takım Lideri | 40h |  | 3,600 | 3,600 |  |
| 27 | 6.2 | Oyun Testçileri (Game Testers) Tarafından Oyunun Test Edilmesi ve Alınan Geri Bildirimlere Yönelik İyileştirme ve Geliştirmelerin Yapılması |  | 30d | 2023-04-27 | 2023-05-31 | 26FS+3d |  |  | 2023-03-11 | 2023-04-14 | 30d | 0d |  | Oyun Testçisi; Takım Lideri; Test ve Analiz Araçları | 480h |  | 36,600 | 36,600 |  |
| 28 | 6.3 | Projenin Son Kontrollerinin Yapılması |  | 20d | 2023-06-01 | 2023-06-28 | 27 |  |  | 2023-04-15 | 2023-05-12 | 20d | 0d |  | Finans ve Muhasebe; Hukuk ve Danışmanlık; İdari; Takım Lideri; Yazılım [0.1%] | 640h |  | 44,000 | 44,000 |  |
| 29 | 7 | Test Aşaması | manual | 166d | 2022-10-17 A | 2023-06-05 |  | 40% | 99d | 2022-10-17 | 2023-06-05 | 166d |  | start no earlier than 2022-10-17 | Bilgisayar Ekipmanları; Finans ve Muhasebe; Hukuk ve Danışmanlık; Oyun Programcısı; Oyun Sanatçısı; Oyun Seviye Tasarımcısı; Oyun Tasarımcısı; Oyun Testçisi; Takım Lideri; Test ve Analiz Araçları; Yazılım [0.1%]; Araştırma ve Geliştirme; İdari; Ofis ve Kira [0.1%]; Pazarlama ve Reklam; Senkron Mühendisi; Ses Mühendisi; Yedek Bilgisayar Parçaları | 20696h | 8320h | 1,203,250 | 1,203,250 | 393,250 |
| 30 | 8 | PROJENİN SUNUMU | milestone | 0d | 2023-06-05 | 2023-06-05 |  |  |  | 2023-06-05 | 2023-06-05 | 0d | 13d | start no earlier than 2023-06-05 | Araştırma ve Geliştirme; Bilgisayar Ekipmanları; Finans ve Muhasebe; Hukuk ve Danışmanlık; İdari; Ofis ve Kira; Pazarlama ve Reklam; Takım Lideri; Test ve Analiz Araçları; Yazılım; Yedek Bilgisayar Parçaları |  |  |  |  |  |
